# 项目1t

Schedule from MS Project, 2017-07-03 to 2017-11-17, costs in ¥.

## Calendars

- 标准: Mon-Fri 08:00-12:00, 13:00-17:00; Sat-Sun off.

## Resources

| Resource | Group | Rate |
| --- | --- | --- |
| 卢宁宁 | 客户经理 | 70 |
| 廖敏 | 项目经理 | 100 |
| 李文 | 开发人员 | 100 |
| 黎观福 | 测试人员 | 80 |
| 部署人员（李兼） | 部署人员 | 70 |
| 质量保证（卢兼） | 质量保证 | 60 |

## Schedule

| ID | WBS | Task | Type | Duration | Start | Finish | Predecessors | Total slack | Resources | Work | Cost |
| --- | --- | --- | --- | --- | --- | --- | --- | --- | --- | --- | --- |
| 1 | 1 | **软件开发** |  | 99.5d | 2017-07-03 | 2017-11-17 |  | 0d |  | 2000.67h | 163,460 |
| 2 | 1.1 | **项目范围规划** |  | 2.75d | 2017-07-03 | 2017-07-05 |  | 0d |  | 28h | 2,620 |
| 3 | 1.1.1 | 确定项目范围 |  | 2h | 2017-07-03 | 2017-07-03 |  | 0d | 卢宁宁; 廖敏 | 4h | 340 |
| 4 | 1.1.2 | 获得项目所需资金 |  | 0.5d | 2017-07-03 | 2017-07-03 | 3 | 0d | 卢宁宁; 廖敏 | 8h | 680 |
| 5 | 1.1.3 | 定义预备资源 |  | 1d | 2017-07-03 | 2017-07-04 | 4 | 0d | 廖敏 | 8h | 800 |
| 6 | 1.1.4 | 获得核心资源 |  | 1d | 2017-07-04 | 2017-07-05 | 5 | 0d | 廖敏 | 8h | 800 |
| 7 | 1.1.5 | 完成项目范围规划 | milestone | 0d | 2017-07-05 | 2017-07-05 | 6 | 0d |  |  |  |
| 8 | 1.2 | **分析/软件需求** |  | 10.17d | 2017-07-05 | 2017-07-19 |  | 0d |  | 120h | 11,626.67 |
| 9 | 1.2.1 | 行为需求分析 |  | 2.5d | 2017-07-05 | 2017-07-10 | 7 | 0d | 李文; 廖敏 | 40h | 4,000 |
| 10 | 1.2.2 | 起草初步的软件规范 |  | 3d | 2017-07-10 | 2017-07-13 | 9 | 0d | 廖敏 | 24h | 2,400 |
| 11 | 1.2.3 | 制定初步预算 |  | 2d | 2017-07-13 | 2017-07-17 | 10 | 0d | 廖敏 | 16h | 1,600 |
| 12 | 1.2.4 | 工作组共同审阅软件规范/预算 |  | 2.67h | 2017-07-17 | 2017-07-17 | 11 | 0d | 廖敏; 李文; 黎观福 | 8h | 746.67 |
| 13 | 1.2.5 | 根据反馈修改软件规范 |  | 0.33d | 2017-07-17 | 2017-07-17 | 12 | 0d | 李文; 廖敏; 卢宁宁 | 8h | 720 |
| 14 | 1.2.6 | 制定交付期限 |  | 0.5d | 2017-07-17 | 2017-07-18 | 13 | 0d | 廖敏; 卢宁宁 | 8h | 680 |
| 15 | 1.2.7 | 获得开展后续工作的批准(概念、期限和预算) |  | 4h | 2017-07-18 | 2017-07-18 | 14 | 0d | 卢宁宁; 廖敏 | 8h | 680 |
| 16 | 1.2.8 | 获得所需资源 |  | 1d | 2017-07-18 | 2017-07-19 | 15 | 0d | 廖敏 | 8h | 800 |
| 17 | 1.2.9 | 完成分析工作 | milestone | 0d | 2017-07-19 | 2017-07-19 | 16 | 0d |  |  |  |
| 18 | 1.3 | **设计** |  | 15d | 2017-07-19 | 2017-08-09 |  | 0d |  | 120h | 12,000 |
| 19 | 1.3.1 | 审阅初步的软件规范 |  | 2d | 2017-07-19 | 2017-07-21 | 17 | 0d | 李文 | 16h | 1,600 |
| 20 | 1.3.2 | 制定功能规范 |  | 5d | 2017-07-21 | 2017-07-28 | 19 | 0d | 廖敏 | 40h | 4,000 |
| 21 | 1.3.3 | 根据功能规范开发原型 |  | 4d | 2017-07-28 | 2017-08-03 | 20 | 0d | 李文 | 32h | 3,200 |
| 22 | 1.3.4 | 审阅功能规范 |  | 2d | 2017-08-03 | 2017-08-07 | 21 | 0d | 廖敏 | 16h | 1,600 |
| 23 | 1.3.5 | 根据反馈修改功能规范 |  | 1d | 2017-08-07 | 2017-08-08 | 22 | 0d | 廖敏 | 8h | 800 |
| 24 | 1.3.6 | 获得开展后续工作的批准 |  | 8h | 2017-08-08 | 2017-08-09 | 23 | 0d | 李文 | 8h | 800 |
| 25 | 1.3.7 | 完成设计工作 | milestone | 0d | 2017-08-09 | 2017-08-09 | 24 | 0d |  |  |  |

| ID | WBS | Task | Type | Duration | Start | Finish | Predecessors | Total slack | Free slack | Constraint | Resources | Work | Cost |
| --- | --- | --- | --- | --- | --- | --- | --- | --- | --- | --- | --- | --- | --- |
| 26 | 1.4 | **开发** |  | 36.75d | 2017-08-09 | 2017-09-29 |  | 0d |  |  |  | 384h | 33,600 |
| 27 | 1.4.1 | 审阅功能规范 |  | 1d | 2017-08-09 | 2017-08-10 | 25 | 0d |  |  | 李文 | 8h | 800 |
| 28 | 1.4.2 | 确定模块化/分层设计参数 |  | 1d | 2017-08-10 | 2017-08-11 | 27 | 0d |  |  | 李文 | 8h | 800 |
| 29 | 1.4.3 | 分派任务给开发人员 |  | 1d | 2017-08-11 | 2017-08-14 | 28 | 0d |  |  | 廖敏 | 8h | 800 |
| 30 | 1.4.4 | 编写代码 |  | 15d | 2017-08-14 | 2017-09-04 | 29 | 0d |  |  | 李文 | 120h | 12,000 |
| 31 | 1.4.5 | 开发人员测试(初步调试) |  | 30d | 2017-08-18 | 2017-09-29 | 30FS-7.5% | 0d |  |  | 黎观福 | 240h | 19,200 |
| 32 | 1.4.6 | 完成开发工作 | milestone | 0d | 2017-09-29 | 2017-09-29 | 31 | 0d |  |  |  |  |  |
| 33 | 1.5 | **测试** |  | 63.75d | 2017-08-09 | 2017-11-07 |  | 7.83d |  |  |  | 312h | 26,880 |
| 34 | 1.5.1 | 根据产品规范制定单元测试计划 |  | 5d | 2017-08-09 | 2017-08-16 | 25 | 31.75d |  |  | 黎观福; 廖敏 | 64h | 5,760 |
| 35 | 1.5.2 | 根据产品规范制定整体测试计划 |  | 3.92d | 2017-08-09 | 2017-08-25 | 25 | 59.83d |  |  | 廖敏; 黎观福 | 32h | 2,880 |
| 36 | 1.5.3 | **单元测试** |  | 15d | 2017-09-29 | 2017-10-20 |  | 0d |  |  |  | 120h | 10,080 |
| 37 | 1.5.3.1 | 审阅模块化代码 |  | 5d | 2017-09-29 | 2017-10-06 | 32, 34 | 0d |  |  | 黎观福 | 40h | 3,200 |
| 38 | 1.5.3.2 | 测试组件模块是否符合产品规范 |  | 2d | 2017-10-06 | 2017-10-10 | 32, 37 | 0d |  |  | 黎观福 | 16h | 1,280 |
| 39 | 1.5.3.3 | 找出不符合产品规范的异常情况 |  | 3d | 2017-10-10 | 2017-10-13 | 38 | 0d |  |  | 黎观福 | 24h | 1,920 |
| 40 | 1.5.3.4 | 修改代码 |  | 3d | 2017-10-13 | 2017-10-18 | 39 | 0d |  |  | 李文 | 24h | 2,400 |
| 41 | 1.5.3.5 | 重新测试经过修改的代码 |  | 2d | 2017-10-18 | 2017-10-20 | 40 | 0d |  |  | 黎观福 | 16h | 1,280 |
| 42 | 1.5.3.6 | 完成单元测试 | milestone | 0d | 2017-10-20 | 2017-10-20 | 41 | 0d |  |  |  |  |  |
| 43 | 1.5.4 | **整体测试** |  | 12d | 2017-10-20 | 2017-11-07 |  | 0d |  |  |  | 96h | 8,160 |
| 44 | 1.5.4.1 | 测试模块集成情况 |  | 5d | 2017-10-20 | 2017-10-27 | 42 | 0d |  |  | 黎观福 | 40h | 3,200 |
| 45 | 1.5.4.2 | 找出不符合规范的异常情况 |  | 2d | 2017-10-27 | 2017-10-31 | 44 | 0d |  |  | 黎观福 | 16h | 1,280 |
| 46 | 1.5.4.3 | 修改代码 |  | 3d | 2017-10-31 | 2017-11-03 | 45 | 0d |  |  | 李文 | 24h | 2,400 |
| 47 | 1.5.4.4 | 重新测试经过修改的代码 |  | 2d | 2017-11-03 | 2017-11-07 | 46 | 0d |  |  | 黎观福 | 16h | 1,280 |
| 48 | 1.5.4.5 | 完成整体测试 | milestone | 0d | 2017-11-07 | 2017-11-07 | 47 | 0d |  |  |  |  |  |
| 49 | 1.6 | **培训** |  | 60.75d | 2017-08-09 | 2017-11-02 |  | 3d |  |  |  | 356.67h | 25,773.33 |
| 50 | 1.6.1 | 制定针对最终用户的培训规范 |  | 4d | 2017-08-09 | 2017-08-15 | 25 | 35.75d | 32.75d |  | 卢宁宁 | 32h | 2,240 |
| 51 | 1.6.2 | 制定针对产品技术支持人员的培训规范 |  | 1.5d | 2017-08-09 | 2017-08-18 | 25 | 33.33d | 30.33d |  | 廖敏 | 12h | 1,200 |
| 52 | 1.6.3 | 确定培训方法(基于计算机的培训、教室授课等) |  | 1.92d | 2017-08-09 | 2017-08-18 | 25 | 32.67d | 29.67d | finish no earlier than 2017-08-18 | 卢宁宁; 质量保证（卢兼）; 廖敏 | 16.67h | 1,293.33 |
| 53 | 1.6.4 | 编写培训材料 |  | 3w | 2017-09-29 | 2017-10-20 | 32, 50, 51, 52 | 3d | 0d |  | 质量保证（卢兼） | 120h | 7,200 |
| 54 | 1.6.5 | 研究培训材料的可用性 |  | 4d | 2017-10-20 | 2017-10-26 | 53 | 3d | 0d |  | 廖敏; 卢宁宁 | 64h | 5,440 |
| 55 | 1.6.6 | 对培训材料进行最后处理 |  | 4d | 2017-10-26 | 2017-11-01 | 54 | 3d | 0d |  | 质量保证（卢兼）; 廖敏; 卢宁宁 | 96h | 7,360 |
| 56 | 1.6.7 | 制定培训机制 |  | 1d | 2017-11-01 | 2017-11-02 | 55 | 3d | 0d |  | 卢宁宁; 质量保证（卢兼） | 16h | 1,040 |
| 57 | 1.6.8 | 完成培训材料 | milestone | 0d | 2017-11-02 | 2017-11-02 | 56 | 3d |  |  |  |  |  |

| ID | WBS | Task | Type | Duration | Start | Finish | Predecessors | Total slack | Free slack | Resources | Work | Cost |
| --- | --- | --- | --- | --- | --- | --- | --- | --- | --- | --- | --- | --- |
| 58 | 1.7 | **文档** |  | 38d | 2017-08-09 | 2017-10-02 |  | 25.75d |  |  | 544h | 40,480 |
| 59 | 1.7.1 | 制定“帮助”规范 |  | 1d | 2017-08-09 | 2017-08-21 | 25 | 28.33d | 2.58d | 廖敏 | 8h | 800 |
| 60 | 1.7.2 | 开发“帮助”系统 |  | 3w | 2017-09-04 | 2017-09-25 | 30FS-5%, 59 | 25.75d | 0d | 李文 | 120h | 12,000 |
| 61 | 1.7.3 | 审阅“帮助”文档 |  | 3d | 2017-09-25 | 2017-09-28 | 60 | 25.75d | 0d | 廖敏; 卢宁宁 | 48h | 4,080 |
| 62 | 1.7.4 | 根据反馈修改“帮助”文档 |  | 2d | 2017-09-28 | 2017-10-02 | 61 | 25.75d | 0d | 廖敏 | 16h | 1,600 |
| 63 | 1.7.5 | 制定用户手册规范 |  | 3.92d | 2017-08-09 | 2017-08-23 | 25 | 29.42d | 0.67d | 廖敏; 卢宁宁 | 32h | 2,720 |
| 64 | 1.7.6 | 编写用户手册 |  | 3w | 2017-08-24 | 2017-09-14 | 30FS-5%, 63 | 28.75d | 0d | 部署人员（李兼）; 质量保证（卢兼） | 240h | 15,600 |
| 65 | 1.7.7 | 审阅所有的用户文档 |  | 2d | 2017-09-14 | 2017-09-18 | 64 | 28.75d | 0d | 廖敏; 卢宁宁 | 32h |  |
| 66 | 1.7.8 | 根据反馈修改用户文档 |  | 4d | 2017-09-18 | 2017-09-27 | 65 | 28.75d | 3d | 部署人员（李兼）; 质量保证（卢兼）; 李文 | 48h | 3,680 |
| 67 | 1.7.9 | 完成文档 | milestone | 0d | 2017-10-02 | 2017-10-02 | 62, 66 | 25.75d |  |  |  |  |
| 68 | 1.8 | **试生产** |  | 82.75d | 2017-07-19 | 2017-11-13 |  | 0d |  |  | 72h | 5,440 |
| 69 | 1.8.1 | 确定测试群体 |  | 1d | 2017-07-19 | 2017-07-20 | 17 | 76.75d | 0d | 廖敏 | 8h | 800 |
| 70 | 1.8.2 | 确定软件分发机制 |  | 1d | 2017-07-20 | 2017-07-21 | 69 | 76.75d |  | 廖敏 | 8h | 800 |
| 71 | 1.8.3 | 安装/部署软件 |  | 1d | 2017-11-07 | 2017-11-08 | 48, 57, 67, 70 | 0d |  | 部署人员（李兼） | 8h | 560 |
| 72 | 1.8.4 | 获得用户反馈 |  | 0.5w | 2017-11-08 | 2017-11-13 | 71 | 0d |  | 质量保证（卢兼）; 卢宁宁 | 40h | 2,600 |
| 73 | 1.8.5 | 评估测试信息 |  | 0.5d | 2017-11-13 | 2017-11-13 | 72 | 0d |  | 廖敏; 卢宁宁 | 8h | 680 |
| 74 | 1.8.6 | 完成试生产工作 | milestone | 0d | 2017-11-13 | 2017-11-13 | 73 | 0d |  |  |  |  |
| 75 | 1.9 | **部署** |  | 3.33d | 2017-11-13 | 2017-11-16 |  | 0d |  |  | 40h | 3,120 |
| 76 | 1.9.1 | 确定最终部署策略 |  | 0.5d | 2017-11-13 | 2017-11-14 | 74 | 0d |  | 部署人员（李兼）; 廖敏 | 8h | 680 |
| 77 | 1.9.2 | 确定部署方法 |  | 0.33d | 2017-11-14 | 2017-11-14 | 76 | 0d |  | 部署人员（李兼）; 廖敏; 卢宁宁 | 8h | 640 |
| 78 | 1.9.3 | 获得部署所需资源 |  | 0.5d | 2017-11-14 | 2017-11-14 | 77 | 0d |  | 廖敏; 卢宁宁 | 8h | 680 |
| 79 | 1.9.4 | 培训技术支持人员 |  | 1d | 2017-11-15 | 2017-11-15 | 78 | 0d |  | 部署人员（李兼） | 8h | 560 |
| 80 | 1.9.5 | 部署软件 |  | 1d | 2017-11-16 | 2017-11-16 | 79 | 0d |  | 部署人员（李兼） | 8h | 560 |
| 81 | 1.9.6 | 完成部署工作 | milestone | 0d | 2017-11-16 | 2017-11-16 | 80 | 0d |  |  |  |  |

| ID | WBS | Task | Type | Duration | Start | Finish | Predecessors | Total slack | Resources | Work | Cost |
| --- | --- | --- | --- | --- | --- | --- | --- | --- | --- | --- | --- |
| 82 | 1.10 | **实施工作结束后的回顾** |  | 0.5d | 2017-11-17 | 2017-11-17 |  | 0d |  | 24h | 1,920 |
| 83 | 1.10.1 | 将经验教训记录存档 |  | 0.17d | 2017-11-17 | 2017-11-17 | 81 | 0d | 廖敏; 部署人员（李兼）; 黎观福; 质量保证（卢兼）; 卢宁宁; 李文 | 8h | 640 |
| 84 | 1.10.2 | 分发给工作组成员 |  | 0.17d | 2017-11-17 | 2017-11-17 | 83 | 0d | 廖敏; 部署人员（李兼）; 黎观福; 质量保证（卢兼）; 卢宁宁; 李文 | 8h | 640 |
| 85 | 1.10.3 | 建立软件维护小组 |  | 0.17d | 2017-11-17 | 2017-11-17 | 84 | 0d | 廖敏; 部署人员（李兼）; 黎观福; 质量保证（卢兼）; 卢宁宁; 李文 | 8h | 640 |
| 86 | 1.10.4 | 完成回顾 | milestone | 0d | 2017-11-17 | 2017-11-17 | 85 | 0d |  |  |  |
| 87 | 1.11 | 软件开发模板结束 | milestone | 0d | 2017-11-17 | 2017-11-17 | 86 | 0d |  |  |  |
